# RoboTractor XMPP and REST Command and Control Server

How a schedule from MS Project changed from version to version. A marks actual dates.

## Version 1 (data date 2014-03-10, saved 2014-03-06)

Note of the change: Adding midterm folder.

| ID | WBS | Task | Duration | Start | Finish | Predecessors | Complete | Total float |
| --- | --- | --- | --- | --- | --- | --- | --- | --- |
| 1 | 1 | **Administrativa** | 38d | 2014-02-10 A | 2014-04-02 |  | 23% | 0d |
| 2 |  | Interim Report | 1w | 2014-02-10 A | 2014-02-14 |  | 50% | 16d |
| 3 |  | Final Project Report | 1w | 2014-03-26 | 2014-04-01 | 38FF |  | 0d |
| 4 |  | Project Demo | 1d | 2014-04-01 | 2014-04-02 | 3 |  | 0d |
| 5 | 2 | **Implementation** | 33d | 2014-02-10 A | 2014-03-26 |  | 38% | 0d |
| 6 | 2.1 | **Development Environment** | 10d | 2014-02-10 A | 2014-02-21 |  | 57% | 0d |
| 7 |  | Fabic Deployment | 1d | 2014-02-14 A | 2014-02-14 |  | 50% | 3d |
| 8 |  | Django Project | 0.5d | 2014-02-19 A | 2014-02-19 A |  | 100% |  |
| 9 |  | ejabberd Configuration | 2d | 2014-02-10 | 2014-02-11 |  |  | 6d |
| 10 |  | Web Server Configuration | 2d | 2014-02-12 A | 2014-02-13 A |  | 100% |  |
| 11 |  | TastyPie Plugin Configuration | 1d | 2014-02-17 A | 2014-02-17 A |  | 100% |  |
| 12 |  | Python Virtual Environments | 1d | 2014-02-18 A | 2014-02-18 A |  | 100% |  |
| 13 |  | Testing | 2d | 2014-02-19 A | 2014-02-21 | 7, 8, 9, 10, 11, 12 | 25% | 0.25d |
| 14 |  | Development Documentation | 0.5d | 2014-02-21 A | 2014-02-21 | 13 | 50% | 0d |
| 15 | 2.2 | **XMPP Implementation** | 23d | 2014-02-24 A | 2014-03-26 | 6 | 37% | 0d |
| 16 |  | Client Login/Auth | 1d | 2014-03-14 | 2014-03-14 | 9 |  | 2d |
| 17 | 2.2.2 | **Tractor Demo Software** | 10d | 2014-02-24 A | 2014-03-07 |  | 60% | 6d |
| 18 |  | Command Language Grammar | 3d | 2014-02-24 A | 2014-02-26 A |  | 100% |  |
| 19 |  | State Machine Design | 3d | 2014-02-27 A | 2014-03-03 A |  | 100% |  |
| 20 |  | XMPP Client | 2d | 2014-03-04 | 2014-03-05 |  |  | 6d |
| 21 |  | Testing | 2d | 2014-03-06 | 2014-03-07 | 18, 19, 20 |  | 6d |
| 22 |  | Debug Channel for Demo and Debug | 2d | 2014-03-17 A | 2014-03-18 | 17 | 50% | 0d |
| 23 |  | Testing | 6d | 2014-03-19 | 2014-03-26 | 22, 16, 17 |  | 0d |
| 24 | 2.3 | **Frontend UI** | 31d | 2014-02-10 A | 2014-03-24 |  | 29% | 2d |
| 25 |  | Google Maps Rendering of Tractor Positions | 1w | 2014-02-10 | 2014-02-14 |  |  | 20d |
| 26 |  | Connect UI to REST Interface | 2d | 2014-03-10 A | 2014-03-11 |  | 75% | 3d |
| 27 |  | Mechanism to input a path to send to the Tractor | 1w | 2014-02-24 A | 2014-02-28 |  | 50% | 10d |
| 28 |  | Testing | 2d | 2014-03-21 | 2014-03-24 | 25, 26, 27 |  | 2d |
| 29 | 2.4 | **Server Backend** | 6d | 2014-03-12 A | 2014-03-19 | 6 | 17% | 5d |
| 30 |  | XMPP to Django (Punjab) connection | 3d | 2014-03-12 | 2014-03-14 |  |  | 6d |
| 31 |  | System Models | 1d | 2014-03-17 A | 2014-03-17 A |  | 100% |  |
| 32 |  | Testing | 2d | 2014-03-18 | 2014-03-19 | 30, 31 |  | 5d |
| 33 | 2.5 | **REST Interface** | 20d | 2014-02-24 A | 2014-03-21 | 6 | 46% | 3d |
| 34 |  | API Design | 3d | 2014-02-24 A | 2014-02-26 |  | 99% | 20d |
| 35 |  | Authentication Model | 3d | 2014-03-14 A | 2014-03-18 |  | 99% | 6d |
| 36 |  | Connection to Punjab Models | 3d | 2014-03-19 | 2014-03-21 |  |  | 3d |
| 37 |  | Testing | 4d | 2014-02-27 | 2014-03-11 |  |  | 11d |
| 38 |  | System Testing | 1w | 2014-03-26 | 2014-04-01 | 5FF |  | 0d |

## Version 2 (data date 2014-03-10, saved 2014-03-08)

Note of the change: Updated signal path. Adding text.

Last finish stays 2014-04-02. Complete tasks 7 → 8.

Changed:

| ID | Task | Start | Finish | Complete | Total float |
| --- | --- | --- | --- | --- | --- |
| 5 | **Implementation** |  |  | 38% → 54% |  |
| 15 | **XMPP Implementation** |  |  | 37% → 50% |  |
| 17 | **Tractor Demo Software** |  |  | 60% → 70% |  |
| 21 | Testing | 2014-03-06 A |  | 0% → 50% |  |
| 23 | Testing | 2014-03-19 A |  | 0% → 25% |  |
| 24 | **Frontend UI** |  |  | 29% → 71% |  |
| 25 | Google Maps Rendering of Tractor Positions | 2014-02-10 A | 2014-02-14 A | 0% → 100% | 20d → none |
| 28 | Testing | 2014-03-21 A |  | 0% → 50% |  |
| 29 | **Server Backend** |  |  | 17% → 25% |  |
| 32 | Testing | 2014-03-18 A |  | 0% → 25% |  |
| 33 | **REST Interface** |  |  | 46% → 54% |  |
| 37 | Testing | 2014-02-27 A |  | 0% → 25% |  |
